# Proyecto System Center Service Manager

Schedule from MS Project, 2015-04-12 to 2016-09-19, status date 2016-07-13, A marks actual dates.

## Calendars

- Estándar: Mon-Fri 09:00-13:00, 15:00-19:00; Sat-Sun off. Exceptions (off unless hours are given): 2016-05-25 (Feriado), 2016-06-17 (Feriado), 2016-06-20 (Feriado), 2016-07-08 (Feriado).

## Schedule

| ID | WBS | Task | Type | Duration | Start | Finish | Predecessors | Complete | Actual start | Actual finish | Constraint | Work | Actual work |
| --- | --- | --- | --- | --- | --- | --- | --- | --- | --- | --- | --- | --- | --- |
| 1 | 1 | **IDMA SOFT** |  | 330d | 2015-04-12 | 2016-07-20 |  | 100% | 2015-11-06 | 2016-09-19 |  | 988h | 988h |
| 2 | 1.1 | **Estudio Preliminar** |  | 20d | 2015-04-12 | 2015-05-07 |  | 100% | 2016-04-12 | 2016-04-18 |  | 38h | 38h |
| 3 | 1.1.1 | Instalación de servidor |  | 10h | 2016-04-12 A | 2016-04-13 A |  | 100% |  |  |  | 10h | 10h |
| 4 | 1.1.2 | Instalación de Pre-requisitos |  | 2h | 2016-04-13 A | 2016-04-13 A | 3 | 100% |  |  |  | 2h | 2h |
| 5 | 1.1.3 | Configurar servidor de SQL |  | 4h | 2016-04-13 A | 2016-04-13 A | 4 | 100% |  |  |  | 4h | 4h |
| 6 | 1.1.4 | Instalación de Service Manager Management Server |  | 12h | 2016-04-14 A | 2016-04-15 A | 5 | 100% |  |  |  | 12h | 12h |
| 7 | 1.1.5 | Generación de backup para la llave de seguridad del sitio |  | 2h | 2016-04-15 A | 2016-04-15 A | 6 | 100% |  |  |  | 2h | 2h |
| 8 | 1.1.6 | Configuraciones generales |  | 8h | 2016-04-15 A | 2016-04-18 A | 7 | 100% |  |  |  | 8h | 8h |
| 9 | 1.2 | **Relevamiento** |  | 30d | 2015-05-08 | 2015-06-18 |  | 100% | 2016-04-18 | 2016-04-27 |  | 55.5h | 55.5h |
| 10 | 1.2.1 | Instalación de servidor |  | 10h | 2016-04-18 A | 2016-04-19 A |  | 100% |  |  |  | 10h | 10h |
| 11 | 1.2.2 | Instalacion de Pre-requisitos |  | 2h | 2016-04-20 A | 2016-04-20 A | 10 | 100% |  |  |  | 2.5h | 2.5h |
| 12 | 1.2.3 | Configurar servidor de SQL |  | 8h | 2016-04-20 A | 2016-04-21 A | 11 | 100% |  |  |  | 8h | 8h |
| 13 | 1.2.4 | Instalación de Service Manager data warehouse management server |  | 12h | 2016-04-21 A | 2016-04-22 A | 12 | 100% |  |  |  | 12h | 12h |
| 14 | 1.2.5 | Generación de backup para la llave de seguridad del sitio |  | 2h | 2016-04-22 A | 2016-04-22 A | 13 | 100% |  |  |  | 2h | 2h |
| 15 | 1.2.6 | Verificación de la instalación del System Center Service |  | 5h | 2016-04-25 A | 2016-04-25 A | 14 | 100% |  |  |  | 5h | 5h |
| 16 | 1.2.7 | Registración del Service Manager Data Warehouse |  | 4h | 2016-04-25 A | 2016-04-26 A | 15 | 100% |  |  |  | 4h | 4h |
| 17 | 1.2.8 | Configuraciones generales |  | 12h | 2016-04-26 A | 2016-04-27 A | 16 | 100% |  |  |  | 12h | 12h |
| 18 | 1.3 | **Ambiente** |  | 60d | 2015-07-31 | 2015-10-22 |  | 100% | 2016-04-27 | 2016-09-19 |  | 40.5h | 40.5h |
| 19 | 1.3.1 | Instalación de servidor |  | 10h | 2016-04-27 A | 2016-04-28 A |  | 100% |  |  |  | 10h | 10h |
| 20 | 1.3.2 | Instalacion de Pre-requisitos |  | 2.5h | 2016-04-28 A | 2016-04-29 A | 19 | 100% |  |  |  | 2.5h | 2.5h |
| 21 | 1.3.3 | Instalación de Sharepoint 2010 Foundation |  | 8h | 2016-04-29 A | 2016-05-02 A | 20 | 100% |  |  |  | 8h | 8h |
| 22 | 1.3.4 | Despliegue de portal |  | 12h | 2016-05-02 A | 2016-05-03 A | 21 | 100% |  |  |  | 12h | 12h |
| 23 | 1.3.5 | Configuraciones generales |  | 8h | 2016-05-03 A | 2016-09-19 A | 22 | 100% |  |  |  | 8h | 8h |
| 24 | 1.4 | **Diseño** |  | 10d | 2015-10-23 | 2015-11-05 |  | 100% | 2016-05-04 | 2016-08-02 |  | 126h | 126h |
| 25 | 1.4.1 | Relevamiento de metodología de trabajo actual |  | 60h | 2016-05-04 A | 2016-07-21 A |  | 100% |  |  |  | 60h | 60h |
| 26 | 1.4.2 | Administración de herramienta |  | 12h | 2016-07-21 A | 2016-07-25 A | 25 | 100% |  |  | start no earlier than 2016-07-13 | 12h | 12h |
| 27 | 1.4.3 | Ajustes de operación diaria |  | 38h | 2016-05-17 A | 2016-07-29 A | 26 | 100% |  |  |  | 38h | 38h |
| 28 | 1.4.4 | Configuración de roles de usuarios |  | 8h | 2016-07-29 A | 2016-08-01 A | 27 | 100% |  |  | start no earlier than 2016-07-13 | 8h | 8h |
| 29 | 1.4.5 | Configuración de informes |  | 8h | 2016-08-01 A | 2016-08-02 A | 28 | 100% |  |  | start no earlier than 2016-07-13 | 8h | 8h |
| 30 | 1.5 | Construcción | manual | 168d | 2015-11-06 A | 2016-07-01 A |  | 100% |  |  |  | 700h | 700h |
| 31 | 1.6 | Pruebas |  | 12h | 2016-07-02 A | 2016-07-07 A |  | 100% |  |  |  | 12h | 12h |
| 32 | 1.7 | Implementación |  | 8h | 2016-07-09 A | 2016-07-11 A |  | 100% |  |  |  | 8h | 8h |

Notes:
- 3: ·Creación del Servidor destino que tendra System Center Service Manager. / ·Configuración general (IP, DNS, Dominio, Windows Update) / ·Instalación de Parches de Seguridad
- 4: ·Instalación de la revisión del Administrador de autorización (KB975332) / ·Instalación de seguridad de Microsoft Report Viewer Redistributable (KB971119) / ·Comprobación de los requisitos previos a la instalación
- 5: ·Utilizar el Servidor de SQL que posee las bases de los servicios de System Center. / ·Validación de los requisitos previos para las bases de System Center Service Manager / ·Creación y configuración de los puertos para las conexiones de las bases de datos para Service Manager / ·Generación de Certificado para informes
- 6: ·Checkeo de los requisitos para la instalación de la administración del Service management. / ·Configuración de las conexiones para la generación de las bases de datos en el servidor destino de SQL. / ·Generación del Grupo de Gestión y el Grupo de Administradores de Gestión. / ·Configuración de la cuenta de servicio para el gestor de administración de flujo de trabajo. / ·Sumario de la instalación realizada.
- 8: Configuración de conector AD / Configuración de conector Operations Manager / Configuración de agentes SCOM para monitoreo
- 10: ·Creación del Servidor destino que tendra System Center Service Manager. / ·Configuración general (IP, DNS, Dominio, Windows Update) / ·Instalación de Parches de Seguridad
- 12: ·Utilizar el Servidor de SQL que posee las bases de los servicios de System Center. / ·Validación de los requisitos previos para las bases de System Center Service Manager Data Warehouse / ·Creación y configuración de los puertos para las conexiones de las bases de datos para Service Manager Data Warehouse
- 13: ·Generación y configuración de las siguientes DB en el servidor destino de SQL: / *Staging and Configuration / *Repository / *Data Mart / *OM Data Mart / *CM Data Mart / ·Generación del Grupo de Gestión / ·Configuración del servicio de Informes (reporting service) / ·Configuración de la cuenta de servicio para el gestor de administración de flujo de trabajo. / ·Configurar los servicios de análisis y de la cuenta de servicios de análisis (analysis services). / ·Configurar las credenciales del servicio de analisis. / ·Monitorear el sumario de la instalación
- 16: ·Conectarse al servidor de datos de Service Manager Data Warehouse. / ·Especificar el nombre de la administración del servidor del Data Warehouse / ·Proveer las credenciales configuradas para el Data Warehouse / ·Confirmar las conexiones. / ·Verificar el sumario del proceso de registración finalizado. / ·
- 22: ·Ejecutar el Asistente de configuración de SharePoint. / ·Añadir un certificado SSL para el servidor IIS a través de SSP en Crear solicitud de dominio. / ·Instalar el protocolo SSL (ambas partes) utilizando: 444 primero para el servidor de contenido y, a continuación: 443 para el portal. (Valores por defecto son al revés)
- 23: ·Configurar el conector de Active Directory. / ·Configurar el conector Administrador de Operations Manager y CI Conector. / ·Configurar el conector Administrador de Configuration Manager y CI Conector. / ·Configurar el conector de SCOM. / ·Instalar y configurar notificaciones. / ·Configurar agentes SCOM.
